# AI智能推荐食谱

Schedule from MS Project, 2020-03-16 to 2020-06-01, costs in ¥.

## Calendars

- 标准: Mon-Fri 08:00-12:00, 13:00-17:00; Sat-Sun off.

## Resources

| Resource |
| --- |
| 项目经理 |
| UI专家 |
| 需求专家 |
| 质量专家 |
| 测试员1 |
| 设计专家 |
| 测试员2 |
| 程序员1 |
| 程序员2 |
| 程序员3 |

## Schedule

| ID | WBS | Task | Duration | Start | Finish | Predecessors | Total slack | Constraint | Resources | Work | Cost |
| --- | --- | --- | --- | --- | --- | --- | --- | --- | --- | --- | --- |
| 1 | 1 | **启动** | 7d | 2020-03-16 | 2020-03-24 |  |  |  |  | 112h | 4,800 |
| 2 | 1.1 | 组件核心团队 | 1d | 2020-03-16 | 2020-03-16 |  | 3d |  | UI专家; 设计专家; 项目经理; 需求专家; 质量专家 | 40h | 800 |
| 3 | 1.2 | 干系人分析 | 2d | 2020-03-17 | 2020-03-18 |  | 1d | start no earlier than 2020-03-17 | 项目经理 [50%] | 8h | 800 |
| 4 | 1.3 | 里程碑计划 | 1d | 2020-03-19 | 2020-03-19 |  | 0d | start no earlier than 2020-03-19 | 项目经理 | 8h | 800 |
| 5 | 1.4 | 制定项目章程 | 2d | 2020-03-20 | 2020-03-23 | 2, 3, 4 | 0d |  | 项目经理 | 16h | 1,600 |
| 6 | 1.5 | 项目启动大会 | 1d | 2020-03-24 | 2020-03-24 | 5 | 0d |  | UI专家; 设计专家; 项目经理; 需求专家; 质量专家 | 40h | 800 |
| 7 | 2 | **规划** | 26d | 2020-03-25 | 2020-04-29 |  | 0d |  |  | 424h | 27,200 |
| 8 | 2.1 | **规划范围** | 11d | 2020-03-25 | 2020-04-08 |  | 0d |  |  | 136h | 4,800 |
| 9 | 2.1.1 | 制定需求说明书 | 5d | 2020-03-25 | 2020-03-31 | 6 | 0d |  | 需求专家 | 40h |  |
| 10 | 2.1.2 | 界面设计 | 3d | 2020-04-01 | 2020-04-03 | 9 | 0d |  | UI专家 | 24h |  |
| 11 | 2.1.3 | 详细计划说明书 | 3d | 2020-04-01 | 2020-04-03 | 9 | 0d |  | 设计专家 | 24h |  |
| 12 | 2.1.4 | 范围说明书 | 3d | 2020-03-27 | 2020-03-31 |  | 3d | start no earlier than 2020-03-27 | 项目经理 | 24h | 2,400 |
| 13 | 2.1.5 | 创建WBS | 2d | 2020-04-06 | 2020-04-07 | 10, 11, 12 | 0d |  | 项目经理 | 16h | 1,600 |
| 14 | 2.1.6 | 形成范围基准 | 1d | 2020-04-08 | 2020-04-08 | 13 | 0d |  | 项目经理 | 8h | 800 |
| 15 | 2.2 | **规划时间** | 7d | 2020-04-09 | 2020-04-17 |  | 0d |  |  | 56h | 5,600 |
| 16 | 2.2.1 | 排列工作包顺序 | 1d | 2020-04-09 | 2020-04-09 | 14 | 0d |  | 项目经理 | 8h | 800 |
| 17 | 2.2.2 | 估算资源 | 2d | 2020-04-10 | 2020-04-13 | 16 | 0d |  | 项目经理 | 16h | 1,600 |
| 18 | 2.2.3 | 估算持续时间 | 2d | 2020-04-14 | 2020-04-15 | 17 | 0d |  | 项目经理 | 16h | 1,600 |
| 19 | 2.2.4 | 制定进度计划 | 1d | 2020-04-16 | 2020-04-16 | 18 | 0d |  | 项目经理 | 8h | 800 |
| 20 | 2.2.5 | 形成进度基准 | 1d | 2020-04-17 | 2020-04-17 | 19 | 0d |  | 项目经理 | 8h | 800 |
| 21 | 2.3 | **规划成本** | 4d | 2020-04-20 | 2020-04-23 |  |  |  |  | 32h | 3,200 |
| 22 | 2.3.1 | 项目成本估算 | 2d | 2020-04-20 | 2020-04-21 | 20 | 0d |  | 项目经理 | 16h | 1,600 |
| 23 | 2.3.2 | 项目预算 | 1d | 2020-04-22 | 2020-04-22 | 22 | 0d |  | 项目经理 | 8h | 800 |
| 24 | 2.3.3 | 形成范围基准 | 1d | 2020-04-23 | 2020-04-23 | 23 | 0d |  | 项目经理 | 8h | 800 |

| ID | WBS | Task | Duration | Start | Finish | Predecessors | Total slack | Free slack | Resources | Work | Cost |
| --- | --- | --- | --- | --- | --- | --- | --- | --- | --- | --- | --- |
| 25 | 2.4 | **规划质量** | 8d | 2020-04-09 | 2020-04-20 |  | 3d |  |  | 64h |  |
| 26 | 2.4.1 | 制定测试计划 | 2d | 2020-04-09 | 2020-04-10 | 14 | 3d | 0d | 质量专家 | 16h |  |
| 27 | 2.4.2 | 制定测试用例 | 6d | 2020-04-13 | 2020-04-20 | 26 | 3d |  | 质量专家 | 48h |  |
| 28 | 2.5 | **规划人力资源** | 4d | 2020-04-14 | 2020-04-17 |  | 4d |  |  | 32h | 3,200 |
| 29 | 2.5.1 | 制定人力资源计划 | 2d | 2020-04-14 | 2020-04-15 | 17 | 4d | 0d | 项目经理 | 16h | 1,600 |
| 30 | 2.5.2 | 制定人员配备管理计划 | 2d | 2020-04-16 | 2020-04-17 | 29 | 4d | 0d | 项目经理 | 16h | 1,600 |
| 31 | 2.6 | **规划沟通** | 2d | 2020-04-20 | 2020-04-21 |  | 6d |  |  | 16h | 1,600 |
| 32 | 2.6.1 | 制定沟通管理计划 | 2d | 2020-04-20 | 2020-04-21 | 30 | 6d |  | 项目经理 | 16h | 1,600 |
| 33 | 2.7 | **规划采购** | 7d | 2020-04-14 | 2020-04-22 |  | 1d |  |  | 56h | 5,600 |
| 34 | 2.7.1 | 自制外购分析 | 2d | 2020-04-14 | 2020-04-15 | 17 | 1d | 0d | 项目经理 | 16h | 1,600 |
| 35 | 2.7.2 | 制定采购文件 | 5d | 2020-04-16 | 2020-04-22 | 34 | 1d |  | 项目经理 | 40h | 4,000 |
| 36 | 2.8 | **规划风险** | 3d | 2020-04-24 | 2020-04-28 |  | 0d |  |  | 24h | 2,400 |
| 37 | 2.8.1 | 识别风险 | 1d | 2020-04-24 | 2020-04-24 | 15, 21, 25, 28, 33 | 0d |  | 项目经理 | 8h | 800 |
| 38 | 2.8.2 | 风险分析 | 1d | 2020-04-27 | 2020-04-27 | 37 | 0d |  | 项目经理 | 8h | 800 |
| 39 | 2.8.3 | 制定风险登记册 | 1d | 2020-04-28 | 2020-04-28 | 38 | 0d |  | 项目经理 | 8h | 800 |
| 40 | 2.9 | 规划整合 | 1d | 2020-04-29 | 2020-04-29 | 39 | 0d |  | 项目经理 | 8h | 800 |
| 41 | 3 | **执行与监控** | 23d | 2020-04-30 | 2020-06-01 |  | 0d |  |  | 992h | 27,200 |
| 42 | 3.1 | 组建项目团队 | 3d | 2020-04-30 | 2020-05-04 | 7 | 0d |  | UI专家; 设计专家; 项目经理; 需求专家; 质量专家 | 120h | 2,400 |
| 43 | 3.2 | **项目执行** | 12d | 2020-05-05 | 2020-05-20 |  | 6d | 0d |  | 160h |  |
| 44 | 3.2.1 | **用户模块** | 12d | 2020-05-05 | 2020-05-20 |  | 6d |  |  | 96h |  |
| 45 | 3.2.1.1 | 注册登录 | 1d | 2020-05-05 | 2020-05-05 | 42 | 6d | 0d | 程序员1 | 8h |  |
| 46 | 3.2.1.2 | 首页 | 1d | 2020-05-06 | 2020-05-06 | 45 | 6d | 0d | 程序员1 | 8h |  |
| 47 | 3.2.1.3 | 推荐系统 | 2d | 2020-05-07 | 2020-05-08 | 46 | 6d | 0d | 程序员1 | 16h |  |
| 48 | 3.2.1.4 | 搜索相关 | 1d | 2020-05-11 | 2020-05-11 | 47 | 6d | 0d | 程序员1 | 8h |  |
| 49 | 3.2.1.5 | 即时通讯 | 3d | 2020-05-12 | 2020-05-14 | 48 | 6d | 0d | 程序员1 | 24h |  |
| 50 | 3.2.1.6 | 创建、阅览帖子 | 2d | 2020-05-15 | 2020-05-18 | 49 | 6d | 0d | 程序员3 | 16h |  |
| 51 | 3.2.1.7 | 用户信息 | 2d | 2020-05-19 | 2020-05-20 | 50 | 6d |  | 程序员3 | 16h |  |

| ID | WBS | Task | Duration | Start | Finish | Predecessors | Total slack | Free slack | Resources | Work | Cost |
| --- | --- | --- | --- | --- | --- | --- | --- | --- | --- | --- | --- |
| 52 | 3.2.2 | **管理员模块** | 8d | 2020-05-05 | 2020-05-14 |  | 10d |  |  | 64h |  |
| 53 | 3.2.2.1 | 信息审核 | 2d | 2020-05-05 | 2020-05-06 | 42 | 10d | 0d | 程序员2 | 16h |  |
| 54 | 3.2.2.2 | 广告发布 | 2d | 2020-05-07 | 2020-05-08 | 53 | 10d | 0d | 程序员2 | 16h |  |
| 55 | 3.2.2.3 | 统计分析 | 1d | 2020-05-11 | 2020-05-11 | 54 | 10d | 0d | 程序员2 | 8h |  |
| 56 | 3.2.2.4 | 备份 | 3d | 2020-05-12 | 2020-05-14 | 55 | 10d |  | 程序员2 | 24h |  |
| 57 | 3.3 | **项目监控** | 3d | 2020-05-05 | 2020-05-07 |  | 17d |  |  | 208h | 3,200 |
| 58 | 3.3.1 | 各项指标监控 | 1d | 2020-05-05 | 2020-05-05 | 42 | 17d | 0d | UI专家; 测试员1; 设计专家; 项目经理; 需求专家; 质量专家 | 48h | 800 |
| 59 | 3.3.2 | 监控评审 | 1d | 2020-05-06 | 2020-05-06 | 58 | 17d | 0d | UI专家; 设计专家; 项目经理; 需求专家; 质量专家 | 40h | 800 |
| 60 | 3.3.3 | 变更评审 | 1d | 2020-05-07 | 2020-05-07 | 59 | 17d |  | UI专家; 设计专家; 项目经理; 需求专家; 质量专家 | 40h | 800 |
| 61 | 3.3.4 | 例会 | 1d | 2020-05-05 | 2020-05-05 | 42 | 19d |  | UI专家; 测试员1; 测试员2; 程序员1; 程序员2; 程序员3; 设计专家; 项目经理; 需求专家; 质量专家 | 80h | 800 |
| 62 | 3.4 | **管理干系人** | 1d | 2020-05-05 | 2020-05-05 |  | 19d |  |  | 24h | 2,400 |
| 63 | 3.4.1 | 发布项目信息 | 1d | 2020-05-05 | 2020-05-05 | 42 | 19d |  | 项目经理 | 8h | 800 |
| 64 | 3.4.2 | 报告监控指标 | 1d | 2020-05-05 | 2020-05-05 | 42 | 19d |  | 项目经理 | 8h | 800 |
| 65 | 3.4.3 | 干系人沟通 | 1d | 2020-05-05 | 2020-05-05 | 42 | 19d |  | 项目经理 | 8h | 800 |
| 66 | 3.5 | **团队建设** | 1d | 2020-05-05 | 2020-05-05 |  | 19d |  |  | 240h | 2,400 |
| 67 | 3.5.1 | 培训 | 1d | 2020-05-05 | 2020-05-05 | 42 | 19d |  | UI专家; 测试员1; 测试员2; 程序员1; 程序员2; 程序员3; 设计专家; 项目经理; 需求专家; 质量专家 | 80h | 800 |
| 68 | 3.5.2 | 娱乐活动 | 1d | 2020-05-05 | 2020-05-05 | 42 | 19d |  | UI专家; 测试员1; 测试员2; 程序员1; 程序员2; 程序员3; 设计专家; 项目经理; 需求专家; 质量专家 | 80h | 800 |
| 69 | 3.5.3 | 沟通 | 1d | 2020-05-05 | 2020-05-05 | 42 | 19d |  | UI专家; 测试员1; 测试员2; 程序员1; 程序员2; 程序员3; 设计专家; 项目经理; 需求专家; 质量专家 | 80h | 800 |
| 70 | 3.6 | 信息资源收集 | 20d | 2020-05-05 | 2020-06-01 | 42 | 0d |  | 项目经理 | 160h | 16,000 |
| 71 | 3.7 | 项目验收 | 1d | 2020-05-21 | 2020-05-21 | 43 | 6d | 0d | UI专家; 测试员1; 测试员2; 程序员1; 程序员2; 程序员3; 设计专家; 项目经理; 需求专家; 质量专家 | 80h | 800 |
| 72 | 4 | **收尾** | 1d | 2020-05-22 | 2020-05-22 |  | 6d |  |  | 168h | 2,400 |
| 73 | 4.1 | 项目终验 | 1d | 2020-05-22 | 2020-05-22 | 71 | 6d |  | UI专家; 测试员1; 测试员2; 程序员1; 程序员2; 程序员3; 设计专家; 项目经理; 需求专家; 质量专家 | 80h | 800 |
| 74 | 4.2 | 结束采购 | 1d | 2020-05-22 | 2020-05-22 | 71 | 6d |  | 项目经理 | 8h | 800 |
| 75 | 4.3 | 项目内部收尾 | 1d | 2020-05-22 | 2020-05-22 | 71 | 6d |  | UI专家; 测试员1; 测试员2; 程序员1; 程序员2; 程序员3; 设计专家; 项目经理; 需求专家; 质量专家 | 80h | 800 |
